# Plan de Trabajo CEI

Schedule from MS Project, 2018-04-23 to 2018-11-22, status date 2018-04-23, A marks actual dates.

## Calendars

- Estándar: Mon-Fri 09:00-13:00, 15:00-19:00; Sat-Sun off. Exceptions (off unless hours are given): 2018-05-01 (Dia del Trabajo).

## Resources

| Resource |
| --- |
| VMENDIETA |
| KAVILES |
| AV |
| CH |
| AV. CH |
| JPI |
| DESARROLLO |
| MPURILLA |
| WGALINDEZ |
| MPURILLA-1 |
| EYATACO |
| PESPINOZA |
| AREYES |
| JQUENTA |
| MPURILLA-2 |
| JPI-1 |
| 2 |
| JPI-2 |
| DAIA |
| DGIT |
| DAT |
| DCC |
| JSALVADOR |
| DDSANA-0 |
| DDSANA-3 |
| DAIA-1 |
| DGIT-1 |
| DAT-1 |
| VMENSIETA |
| OPERACIONES |
| CQUENTA |
| JANTON |
| DDST1 |
| DCC1 |

## Schedule

| ID | WBS | Task | Duration | Start | Finish | Predecessors | Complete | Remaining | Total slack | Free slack | Constraint | Resources | Work | Actual work | Tarea Critica |
| --- | --- | --- | --- | --- | --- | --- | --- | --- | --- | --- | --- | --- | --- | --- | --- |
| 1 | 1 | **Control Electrónico del IGV** | 153d | 2018-04-23 A | 2018-11-22 |  | 11% | 136.83d | 0d |  |  |  | 2489h | 959h |  |
| 2 | 1.1 | **Gestión del Proyecto** | 93.25d | 2018-04-23 A | 2018-08-31 |  | 63% | 34.32d | 59.75d |  |  |  | 121h | 79h |  |
| 3 | 1.1.1 | **Iniciación** | 6.25d | 2018-04-23 A | 2018-05-02 A |  | 100% |  |  |  |  |  | 50h | 50h |  |
| 4 | 1.1.1.1 | **Project Charter** | 1.12d | 2018-04-23 A | 2018-04-24 A |  | 100% |  |  |  |  |  | 9h | 9h |  |
| 5 | 1.1.1.1.1 | Elaborar el Project Charter | 1d | 2018-04-23 A | 2018-04-23 A |  | 100% |  |  |  |  | JANTON | 8h | 8h | verde |
| 6 | 1.1.1.1.2 | Revisar el Project Charter | 1h | 2018-04-24 A | 2018-04-24 A | 5 | 100% |  |  |  |  | JANTON | 1h | 1h | verde |
| 7 | 1.1.1.2 | **Scope Statement** | 5.12d | 2018-04-24 A | 2018-05-02 A |  | 100% |  |  |  |  |  | 41h | 41h |  |
| 8 | 1.1.1.2.1 | Elaborar el Scope Statement | 5d | 2018-04-24 A | 2018-05-02 A | 6 | 100% |  |  |  |  | JANTON | 40h | 40h | naranja |
| 9 | 1.1.1.2.2 | Revisar el Scope Statement | 1h | 2018-05-02 A | 2018-05-02 A | 8 | 100% |  |  |  |  | JANTON | 1h | 1h | naranja |
| 10 | 1.1.2 | **Plan de Proyecto** | 3d | 2018-05-02 A | 2018-05-07 A |  | 100% |  |  |  |  |  | 24h | 24h |  |
| 11 | 1.1.2.1 | Elaborar el Plan de Proyecto | 3d | 2018-05-02 A | 2018-05-07 A | 9 | 100% |  |  |  |  | JANTON | 24h | 24h | naranja |
| 12 | 1.1.3 | **Informes de Estado del Proyecto** | 72.12d | 2018-05-18 A | 2018-08-28 |  | 18% | 59.4d | 62.38d |  |  |  | 17h | 3h |  |
| 13 | 1.1.3.1 | Informes de Estado del Proyecto 1 | 3h | 2018-05-18 A | 2018-05-18 A | 5FS+17d | 100% |  |  |  | start no earlier than 2014-03-03 | JANTON | 3h | 3h | verde |
| 14 | 1.1.3.2 | Informes de Estado del Proyecto 2 | 1h | 2018-05-25 | 2018-05-25 | 13FS+5d |  |  | 62.38d | 0d | start no earlier than 2014-03-10 | JANTON | 1h |  | blanco |
| 15 | 1.1.3.3 | Informes de Estado del Proyecto 3 | 1h | 2018-06-01 | 2018-06-01 | 14FS+5d |  |  | 62.38d | 0d | start no earlier than 2014-03-17 | JANTON | 1h |  | blanco |
| 16 | 1.1.3.4 | Informes de Estado del Proyecto 4 | 1h | 2018-06-08 | 2018-06-08 | 15FS+5d |  |  | 62.38d | 0d | start no earlier than 2014-03-24 | JANTON | 1h |  | blanco |
| 17 | 1.1.3.5 | Informes de Estado del Proyecto 5 | 1h | 2018-06-15 | 2018-06-15 | 16FS+5d |  |  | 62.38d | 0d | start no earlier than 2014-03-31 | JANTON | 1h |  | blanco |
| 18 | 1.1.3.6 | Informes de Estado del Proyecto 6 | 1h | 2018-06-22 | 2018-06-22 | 17FS+5d |  |  | 62.38d | 0d | start no earlier than 2014-04-07 | JANTON | 1h |  | blanco |
| 19 | 1.1.3.7 | Informes de Estado del Proyecto 7 | 1h | 2018-07-02 | 2018-07-02 | 18FS+5d |  |  | 62.38d | 0d | start no earlier than 2014-04-14 | JANTON | 1h |  | blanco |
| 20 | 1.1.3.8 | Informes de Estado del Proyecto 8 | 1h | 2018-07-09 | 2018-07-09 | 19FS+5d |  |  | 62.38d | 0d | start no earlier than 2014-04-21 | JANTON | 1h |  | blanco |
| 21 | 1.1.3.9 | Informes de Estado del Proyecto 9 | 1h | 2018-07-16 | 2018-07-16 | 20FS+5d |  |  | 62.38d | 0d | start no earlier than 2014-04-28 | JANTON | 1h |  | blanco |
| 22 | 1.1.3.10 | Informes de Estado del Proyecto 10 | 1h | 2018-07-23 | 2018-07-23 | 21FS+5d |  |  | 62.38d | 0d | start no earlier than 2014-05-05 | JANTON | 1h |  | blanco |
| 23 | 1.1.3.11 | Informes de Estado del Proyecto 11 | 1h | 2018-07-30 | 2018-07-30 | 22FS+5d |  |  | 62.38d | 0d | start no earlier than 2014-05-12 | JANTON | 1h |  | blanco |
| 24 | 1.1.3.12 | Informes de Estado del Proyecto 12 | 1h | 2018-08-06 | 2018-08-06 | 23FS+5d |  |  | 62.38d | 0d | start no earlier than 2014-05-19 | JANTON | 1h |  | blanco |
| 25 | 1.1.3.13 | Informes de Estado del Proyecto 13 | 1h | 2018-08-13 | 2018-08-13 | 24FS+5d |  |  | 62.38d | 0d | start no earlier than 2014-05-26 | JANTON | 1h |  | blanco |
| 26 | 1.1.3.14 | Informes de Estado del Proyecto 14 | 1h | 2018-08-20 | 2018-08-20 | 25FS+5d |  |  | 62.38d | 0d | start no earlier than 2014-06-02 | JANTON | 1h |  | blanco |
| 27 | 1.1.3.15 | Informes de Estado del Proyecto 15 | 1h | 2018-08-28 | 2018-08-28 | 26FS+5d |  |  | 62.38d | 2.62d | start no earlier than 2014-06-09 | JANTON | 1h |  | blanco |

| ID | WBS | Task | Type | Duration | Start | Finish | Predecessors | Complete | Remaining | Total slack | Free slack | Constraint | Resources | Work | Actual work | Tarea Critica |
| --- | --- | --- | --- | --- | --- | --- | --- | --- | --- | --- | --- | --- | --- | --- | --- | --- |
| 28 | 1.1.4 | **Reunión de Coordinación Semanal** |  | 73.75d | 2018-05-21 A | 2018-08-30 |  | 7% | 68.83d | 59.75d |  |  |  | 30h | 2h |  |
| 29 | 1.1.4.1 | Reunión de Coordinación Semanal 1 |  | 2h | 2018-05-21 A | 2018-05-21 A | 5FS+18d | 100% |  |  |  | start no earlier than 2014-03-03 | JANTON | 2h | 2h | verde |
| 30 | 1.1.4.2 | Reunión de Coordinación Semanal 2 |  | 2h | 2018-05-28 | 2018-05-28 | 29FS+5d |  |  | 59.75d | 0d | start no earlier than 2014-03-10 | JANTON | 2h |  | blanco |
| 31 | 1.1.4.3 | Reunión de Coordinación Semanal 3 |  | 2h | 2018-06-04 | 2018-06-04 | 30FS+5d |  |  | 59.75d | 0d | start no earlier than 2014-03-17 | JANTON | 2h |  | blanco |
| 32 | 1.1.4.4 | Reunión de Coordinación Semanal 4 |  | 2h | 2018-06-11 | 2018-06-11 | 31FS+5d |  |  | 59.75d | 0d | start no earlier than 2014-03-24 | JANTON | 2h |  | blanco |
| 33 | 1.1.4.5 | Reunión de Coordinación Semanal 5 |  | 2h | 2018-06-19 | 2018-06-19 | 32FS+5d |  |  | 59.75d | 0d | start no earlier than 2014-03-31 | JANTON | 2h |  | blanco |
| 34 | 1.1.4.6 | Reunión de Coordinación Semanal 6 |  | 2h | 2018-06-26 | 2018-06-26 | 33FS+5d |  |  | 59.75d | 0d | start no earlier than 2014-04-07 | JANTON | 2h |  | blanco |
| 35 | 1.1.4.7 | Reunión de Coordinación Semanal 7 |  | 2h | 2018-07-03 | 2018-07-03 | 34FS+5d |  |  | 59.75d | 0d | start no earlier than 2014-04-14 | JANTON | 2h |  | blanco |
| 36 | 1.1.4.8 | Reunión de Coordinación Semanal 8 |  | 2h | 2018-07-10 | 2018-07-10 | 35FS+5d |  |  | 59.75d | 0d | start no earlier than 2014-04-21 | JANTON | 2h |  | blanco |
| 37 | 1.1.4.9 | Reunión de Coordinación Semanal 9 |  | 2h | 2018-07-18 | 2018-07-18 | 36FS+5d |  |  | 59.75d | 0d | start no earlier than 2014-04-28 | JANTON | 2h |  | blanco |
| 38 | 1.1.4.10 | Reunión de Coordinación Semanal 10 |  | 2h | 2018-07-25 | 2018-07-25 | 37FS+5d |  |  | 59.75d | 0d | start no earlier than 2014-05-05 | JANTON | 2h |  | blanco |
| 39 | 1.1.4.11 | Reunión de Coordinación Semanal 11 |  | 2h | 2018-08-01 | 2018-08-01 | 38FS+5d |  |  | 59.75d | 0d | start no earlier than 2014-05-12 | JANTON | 2h |  | blanco |
| 40 | 1.1.4.12 | Reunión de Coordinación Semanal 12 |  | 2h | 2018-08-08 | 2018-08-08 | 39FS+5d |  |  | 59.75d | 0d | start no earlier than 2014-05-19 | JANTON | 2h |  | blanco |
| 41 | 1.1.4.13 | Reunión de Coordinación Semanal 13 |  | 2h | 2018-08-16 | 2018-08-16 | 40FS+5d |  |  | 59.75d | 0d | start no earlier than 2014-05-26 | JANTON | 2h |  | blanco |
| 42 | 1.1.4.14 | Reunión de Coordinación Semanal 14 |  | 2h | 2018-08-23 | 2018-08-23 | 41FS+5d |  |  | 59.75d | 0d | start no earlier than 2014-06-02 | JANTON | 2h |  | blanco |
| 43 | 1.1.4.15 | Reunión de Coordinación Semanal 15 |  | 2h | 2018-08-30 | 2018-08-30 | 42FS+5d |  |  | 59.75d | 0d | start no earlier than 2014-06-09 | JANTON | 2h |  | blanco |
| 44 | 1.1.5 | **Cierre del Proyecto** |  | 0.5d | 2018-08-30 | 2018-08-31 |  |  |  | 59.75d |  |  |  |  |  |  |
| 45 | 1.1.5.1 | Elaborar Documentos de Cierre del Proyecto |  | 4h | 2018-08-30 | 2018-08-31 | 27, 43 |  |  | 59.75d |  |  |  |  |  | blanco |
| 46 | 1.2 | **Disponibilidad de Información** |  | 41d | 2018-04-23 | 2018-06-19 |  |  |  | 112d |  |  |  |  |  |  |
| 47 | 1.2.1 | **Control de Calidad** |  | 41d | 2018-04-23 | 2018-06-19 |  |  |  | 112d |  |  |  |  |  |  |
| 48 | 1.2.1.1 | Revisar Modelo de IGV - Teradata |  | 6d | 2018-04-23 | 2018-04-30 |  |  |  | 147d | 0d |  |  |  |  | verde |
| 49 | 1.2.1.2 | Revisar Modelo de PN – Teradata |  | 41d | 2018-04-23 | 2018-06-19 |  |  |  | 112d | 0d |  |  |  |  | naranja |
| 50 | 1.2.2 | **Implantación** |  | 36d | 2018-04-30 | 2018-06-19 |  |  |  | 112d |  |  |  |  |  |  |
| 51 | 1.2.2.1 | Modelo de IGV - Teradata |  | 1d | 2018-04-30 | 2018-04-30 | 48FS-1d |  |  | 147d | 35d |  |  |  |  | verde |
| 52 | 1.2.2.2 | Modelo de PN – Teradata |  | 1d | 2018-06-19 | 2018-06-19 | 49FS-1d |  |  | 112d | 0d |  |  |  |  | blanco |
| 53 | 1.2.3 | Entregable: Modelo del IGV y PN -Teradata - Implementado | milestone | 0d | 2018-06-19 | 2018-06-19 | 52, 51 |  |  | 112d |  |  |  |  |  | blanco |

| ID | WBS | Task | Type | Duration | Start | Finish | Predecessors | Complete | Remaining | Total slack | Free slack | Resources | Work | Actual work | Tarea Critica |
| --- | --- | --- | --- | --- | --- | --- | --- | --- | --- | --- | --- | --- | --- | --- | --- |
| 54 | 1.3 | **Gestión de Riesgo del Cumplimiento Tributario del IGV** |  | 49d | 2018-04-23 A | 2018-06-29 |  | 51% | 23.77d | 104d |  |  | 2312h | 832h |  |
| 55 | 1.3.1 | **Matriz de Riesgo del Contribuyente** |  | 49d | 2018-04-23 A | 2018-06-29 |  | 51% | 24.13d | 104d |  |  | 2280h | 800h | rojo |
| 56 | 1.3.1.1 | **Arquitectura** |  | 45d | 2018-04-23 | 2018-06-25 |  |  |  | 108d |  |  | 1120h |  |  |
| 57 | 1.3.1.1.1 | **Construcción** |  | 45d | 2018-04-23 | 2018-06-25 |  |  |  | 108d |  |  | 1056h |  |  |
| 58 | 1.3.1.1.1.1 | Ambiente Desarrollo |  | 19d | 2018-04-23 | 2018-05-18 |  |  |  | 108d | 0d | DAIA; DGIT; DAT | 456h |  | verde |
| 59 | 1.3.1.1.1.2 | Ambiente Calidad |  | 23d | 2018-04-23 | 2018-05-24 |  |  |  | 127d | 0d | DAIA-1; DGIT-1; DAT-1 | 552h |  | naranja |
| 60 | 1.3.1.1.1.3 | Elaboración de Documentación Técnica e Instrucctivo. |  | 6d | 2018-06-18 | 2018-06-25 | 58FS+20d |  |  | 108d |  | DAIA | 48h |  | blanco |
| 61 | 1.3.1.1.2 | **Implantación** |  | 5d | 2018-05-21 | 2018-05-25 |  |  |  | 129d |  |  | 48h |  |  |
| 62 | 1.3.1.1.2.1 | Ambiente de Desarrollo |  | 1d | 2018-05-21 | 2018-05-21 | 58 |  |  | 133d | 4d | DAIA; DGIT; DAT | 24h |  | verde |
| 63 | 1.3.1.1.2.2 | Ambiente de Calidad |  | 1d | 2018-05-25 | 2018-05-25 | 59 |  |  | 127d | 0d | DAIA-1; DGIT-1; DAT-1 | 24h |  | blanco |
| 64 | 1.3.1.1.2.3 | Entregable: Ambientes de Desarrollo y Calidad | milestone | 0d | 2018-05-25 | 2018-05-25 | 63, 62 |  |  | 129d |  |  |  |  | blanco |
| 65 | 1.3.1.1.3 | **Post Implantación** |  | 2d | 2018-05-28 | 2018-05-29 |  |  |  | 127d |  |  | 16h |  |  |
| 66 | 1.3.1.1.3.1 | Pruebas de rendimiento |  | 2d | 2018-05-28 | 2018-05-29 | 63 |  |  | 127d |  | DCC | 16h |  | blanco |
| 67 | 1.3.1.2 | **Desarrollo** |  | 24d | 2018-04-23 A | 2018-05-25 |  | 83% | 4d | 104d |  |  | 960h | 800h |  |
| 68 | 1.3.1.2.1 | Matriz PRC - Variable de Condición de Domicilio - Estado del Contribuyente |  | 19d | 2018-04-23 A | 2018-05-18 A |  | 100% |  |  |  | WGALINDEZ | 152h | 152h | verde |
| 69 | 1.3.1.2.2 | Matriz PRC - Variable de Omiso a la Declaración MEPECO |  | 19d | 2018-04-23 A | 2018-05-18 A |  | 100% |  |  |  | KAVILES | 152h | 152h | verde |
| 70 | 1.3.1.2.3 | Matriz PRC - Variable de Omiso a la Declaración PRICO |  | 19d | 2018-04-23 A | 2018-05-18 A |  | 100% |  |  |  | EYATACO | 152h | 152h | verde |
| 71 | 1.3.1.2.4 | Matriz PRC - Variable Omisos Libros Electrónicos - Padrón acotado |  | 19d | 2018-04-23 A | 2018-05-18 A |  | 100% |  |  |  | VMENDIETA | 152h | 152h | verde |
| 72 | 1.3.1.2.5 | Matriz PRC - Servicio de Perfil |  | 19d | 2018-04-23 A | 2018-05-18 A |  | 100% |  |  |  | JQUENTA | 152h | 152h | verde |
| 73 | 1.3.1.2.6 | **Integración** |  | 5d | 2018-05-21 A | 2018-05-25 |  | 20% | 4d | 104d |  |  | 200h | 40h |  |
| 74 | 1.3.1.2.6.1 | Matriz PRC - Variable de Condición de Domicilio - Estado del Contribuyente |  | 5d | 2018-05-21 A | 2018-05-25 | 68 | 20% | 4d | 104d | 0d | WGALINDEZ | 40h | 8h | naranja |
| 75 | 1.3.1.2.6.2 | Matriz PRC - Variable de Omiso a la Declaración MEPECO |  | 5d | 2018-05-21 A | 2018-05-25 | 69 | 20% | 4d | 104d | 0d | KAVILES | 40h | 8h | naranja |
| 76 | 1.3.1.2.6.3 | Matriz PRC - Variable de Omiso a la Declaración PRICO |  | 5d | 2018-05-21 A | 2018-05-25 | 70 | 20% | 4d | 104d | 0d | EYATACO | 40h | 8h | naranja |
| 77 | 1.3.1.2.6.4 | Matriz PRC - Variable Omisos Libros Electrónicos - Padrón acotado |  | 5d | 2018-05-21 A | 2018-05-25 | 71 | 20% | 4d | 104d | 0d | VMENDIETA | 40h | 8h | naranja |
| 78 | 1.3.1.2.6.5 | Matriz PRC - Servicio de Perfil |  | 5d | 2018-05-21 A | 2018-05-25 | 72 | 20% | 4d | 104d | 0d | JQUENTA | 40h | 8h | naranja |

| ID | WBS | Task | Type | Duration | Start | Finish | Predecessors | Complete | Remaining | Total slack | Free slack | Resources | Work | Actual work | Tarea Critica |
| --- | --- | --- | --- | --- | --- | --- | --- | --- | --- | --- | --- | --- | --- | --- | --- |
| 79 | 1.3.1.3 | **Control de Calidad** |  | 24d | 2018-05-28 | 2018-06-28 |  |  |  | 104d |  |  | 192h |  |  |
| 80 | 1.3.1.3.1 | Matriz de Riesgo del Contribuyente |  | 24d | 2018-05-28 | 2018-06-28 | 78, 74, 75, 76, 77 |  |  | 104d | 0d | MPURILLA | 192h |  | blanco |
| 81 | 1.3.1.4 | **Implantación** |  | 1d | 2018-06-29 | 2018-06-29 |  |  |  | 104d |  |  | 8h |  |  |
| 82 | 1.3.1.4.1 | Instalación de Matriz de Riesgos del Contribuyente |  | 1d | 2018-06-29 | 2018-06-29 | 80 |  |  | 104d | 0d | OPERACIONES | 8h |  | blanco |
| 83 | 1.3.1.5 | Entregable: Matriz de Riesgos del Contribuyente -Implementada | milestone | 0d | 2018-06-29 | 2018-06-29 | 82 |  |  | 104d |  |  |  |  | blanco |
| 84 | 1.3.2 | **Actualizar vinculaciones a los ONR** |  | 4d | 2018-04-23 A | 2018-04-26 |  | 80% | 0.8d | 149d |  |  | 32h | 32h | rojo |
| 85 | 1.3.2.1 | **Análisis** |  | 1d | 2018-04-23 A | 2018-04-23 |  | 50% | 0.5d | 152d |  |  | 8h | 8h |  |
| 86 | 1.3.2.1.1 | Revisión del MPN |  | 1d | 2018-04-23 | 2018-04-23 |  |  |  | 152d |  |  |  |  | rojo |
| 87 | 1.3.2.1.2 | Elaboración del F2-AR1 |  | 1d | 2018-04-23 A | 2018-04-23 A | 86 | 100% |  |  |  | CQUENTA | 8h | 8h | rojo |
| 88 | 1.3.2.2 | **Desarrollo** |  | 1d | 2018-04-24 A | 2018-04-24 A |  | 100% |  |  |  |  | 8h | 8h |  |
| 89 | 1.3.2.2.1 | Desarrollar Actualizar vinculaciones a los ONR |  | 1d | 2018-04-24 A | 2018-04-24 A | 87 | 100% |  |  |  | CQUENTA | 8h | 8h | rojo |
| 90 | 1.3.2.3 | **Control de Calidad** |  | 1d | 2018-04-25 A | 2018-04-25 A |  | 100% |  |  |  |  | 8h | 8h |  |
| 91 | 1.3.2.3.1 | Actualizar vinculaciones a los ONR |  | 1d | 2018-04-25 A | 2018-04-25 A | 89 | 100% |  |  |  | CQUENTA | 8h | 8h | rojo |
| 92 | 1.3.2.4 | **Implantación** |  | 1d | 2018-04-26 A | 2018-04-26 A |  | 100% |  |  |  |  | 8h | 8h |  |
| 93 | 1.3.2.4.1 | Implementar Actualizar vinculaciones a los ONR |  | 1d | 2018-04-26 A | 2018-04-26 A | 91 | 100% |  |  |  | CQUENTA | 8h | 8h | rojo |
| 94 | 1.3.2.5 | Entregable: Acta de Aprobación de Actualizar vinculaciones a los ONR - Implementada | milestone | 0d | 2018-04-26 A | 2018-04-26 A | 93 | 100% |  |  |  | CQUENTA |  |  | rojo |
| 95 | 1.3.3 | **APP de Consulta de Cumplimiento Tributario del IGV** |  | 0d | 2018-04-23 A | 2018-04-23 A |  | 100% |  |  |  |  |  |  | rojo |
| 96 | 1.3.3.1 | Entregable: APP de Consulta de Cumplimiento Tributario - Implementado | milestone | 0d | 2018-04-23 A | 2018-04-23 A |  | 100% |  |  |  |  |  |  | rojo |
| 97 | 1.3.4 | **Tablero de Gestión y Seguimiento del Control Electrónico del IGV** |  | 0d | 2018-04-23 A | 2018-04-23 A |  | 100% |  |  |  |  |  |  | rojo |
| 98 | 1.3.4.1 | Entregable: Tablero de Gestión y Seguimiento de Control Electónico del IGV - Implementado | milestone | 0d | 2018-04-23 A | 2018-04-23 A |  | 100% |  |  |  |  |  |  | rojo |
| 99 | 1.4 | **Actualización del Registro Único de Contribuyente** |  | 49d | 2018-04-24 A | 2018-07-02 |  | 44% | 27.51d | 103d |  |  | 56h | 48h |  |
| 100 | 1.4.1 | **Campaña de Actualización email (configuración de 12 a 6 meses)** |  | 8d | 2018-05-14 A | 2018-05-23 |  | 75% | 2d | 131d |  |  | 56h | 48h |  |
| 101 | 1.4.1.1 | **Desarrollo** |  | 2d | 2018-05-14 A | 2018-05-15 A |  | 100% |  |  |  |  | 16h | 16h |  |
| 102 | 1.4.1.1.1 | Campaña de Actualización email (configuración de 12 a 6 meses) |  | 2d | 2018-05-14 A | 2018-05-15 A | 5FS+13d | 100% |  |  |  | DDST1 | 16h | 16h | verde |

Notes:
- 84: comentarios: Se esta evaluando implementar la 2da y 3ra fase del proyecto M_SNADE116.

| ID | WBS | Task | Type | Duration | Start | Finish | Predecessors | Complete | Remaining | Total slack | Free slack | Resources | Work | Actual work | Tarea Critica |
| --- | --- | --- | --- | --- | --- | --- | --- | --- | --- | --- | --- | --- | --- | --- | --- |
| 103 | 1.4.1.2 | **Control de Calidad** |  | 5d | 2018-05-16 A | 2018-05-22 |  | 80% | 1d | 131d |  |  | 40h | 32h |  |
| 104 | 1.4.1.2.1 | Campaña de Actualización email (configuración de 12 a 6 meses) |  | 5d | 2018-05-16 A | 2018-05-22 | 102 | 80% | 1d | 131d | 0d | DCC1 | 40h | 32h | naranja |
| 105 | 1.4.1.3 | **Implantación** |  | 1d | 2018-05-23 | 2018-05-23 |  |  |  | 131d |  |  |  |  |  |
| 106 | 1.4.1.3.1 | Implementar Campaña de Actualización email (configuración de 12 a 6 meses) |  | 1d | 2018-05-23 | 2018-05-23 | 104 |  |  | 131d | 0d |  |  |  | blanco |
| 107 | 1.4.1.4 | Entregable: Acta de Aprobación de Campaña de Actualización email | milestone | 0d | 2018-05-23 | 2018-05-23 | 106 |  |  | 131d |  |  |  |  | blanco |
| 108 | 1.4.2 | **Campaña de Actualización celular** |  | 49d | 2018-04-24 A | 2018-07-02 |  | 39% | 30d | 103d |  |  |  |  |  |
| 109 | 1.4.2.1 | **Desarrollo** |  | 27d | 2018-04-24 A | 2018-05-31 |  | 70% | 8d | 103d |  |  |  |  |  |
| 110 | 1.4.2.1.1 | Desarrollar Campaña de Actualización celular |  | 27d | 2018-04-24 A | 2018-05-31 |  | 70% | 8d | 103d | 0d |  |  |  | naranja |
| 111 | 1.4.2.2 | **Control de Calidad** |  | 21d | 2018-06-01 | 2018-06-29 |  |  |  | 103d |  |  |  |  |  |
| 112 | 1.4.2.2.1 | Campaña de Actualización celular |  | 21d | 2018-06-01 | 2018-06-29 | 110 |  |  | 103d | 0d |  |  |  | blanco |
| 113 | 1.4.2.3 | **Implantación** |  | 1d | 2018-07-02 | 2018-07-02 |  |  |  | 103d |  |  |  |  |  |
| 114 | 1.4.2.3.1 | Implementar Campaña de Actualización celular |  | 1d | 2018-07-02 | 2018-07-02 | 112 |  |  | 103d | 0d |  |  |  | blanco |
| 115 | 1.4.2.4 | Entregable: Acta de Aprobación de Campaña de Actualización celular | milestone | 0d | 2018-07-02 | 2018-07-02 | 114 |  |  | 103d |  |  |  |  | blanco |
| 116 | 1.5 | **Controles electrónicos a la autorización y emisión de CdP** |  | 72d | 2018-04-23 A | 2018-08-01 |  |  | 71.85d | 81d |  |  |  |  |  |
| 117 | 1.5.1 | **Alertas de inconsistencias en el CPE** |  | 27d | 2018-04-23 A | 2018-05-30 |  | 3% | 26.07d | 126d |  |  |  |  | rojo |
| 118 | 1.5.1.1 | **Análisis** |  | 2d | 2018-04-23 | 2018-04-24 |  |  |  | 0d |  |  |  |  |  |
| 119 | 1.5.1.1.1 | Revisión del MPN |  | 1d | 2018-04-23 | 2018-04-23 |  |  |  | 0d |  |  |  |  | rojo |
| 120 | 1.5.1.1.2 | Elaboración del F2-AR1 |  | 1d | 2018-04-24 | 2018-04-24 | 119 |  |  | 0d |  |  |  |  | rojo |
| 121 | 1.5.1.2 | **Desarrollo** |  | 18d | 2018-04-24 A | 2018-05-18 |  | 6% | 17d | 126d |  |  |  |  |  |
| 122 | 1.5.1.2.1 | Desarrollar Alertas de inconsistencias en el CPE |  | 18d | 2018-04-24 A | 2018-05-18 | 120 | 6% | 17d | 126d | 0d |  |  |  | rojo |
| 123 | 1.5.1.3 | **Control de Calidad** |  | 8d | 2018-05-21 | 2018-05-30 |  |  |  | 126d |  |  |  |  |  |
| 124 | 1.5.1.3.1 | Alertas de inconsistencias en el CPE |  | 8d | 2018-05-21 | 2018-05-30 | 122 |  |  | 126d | 0d |  |  |  | rojo |
| 125 | 1.5.1.4 | **Implantación** |  | 1d | 2018-05-30 | 2018-05-30 |  |  |  | 126d |  |  |  |  |  |
| 126 | 1.5.1.4.1 | Implementar Alertas de inconsistencias en el CPE |  | 1d | 2018-05-30 | 2018-05-30 | 124FS-1d |  |  | 126d | 0d |  |  |  | blanco |
| 127 | 1.5.1.5 | Entregable: Acta de Aprobación de Alertas de inconsistencias en el CPE | milestone | 0d | 2018-05-30 | 2018-05-30 | 126 |  |  | 126d |  |  |  |  | blanco |

| ID | WBS | Task | Type | Duration | Start | Finish | Predecessors | Total slack | Free slack | Tarea Critica |
| --- | --- | --- | --- | --- | --- | --- | --- | --- | --- | --- |
| 128 | 1.5.2 | **Restricción a la Autorización de CdP** |  | 35d | 2018-05-15 | 2018-07-02 |  | 103d |  |  |
| 129 | 1.5.2.1 | **Desarrollo** |  | 14d | 2018-05-15 | 2018-06-01 |  | 103d |  |  |
| 130 | 1.5.2.1.1 | Desarrollar Restricción a la Autorización de CdP |  | 14d | 2018-05-15 | 2018-06-01 | 5FS+14d | 103d | 0d | naranja |
| 131 | 1.5.2.2 | **Control de Calidad** |  | 21d | 2018-06-04 | 2018-07-02 |  | 103d |  |  |
| 132 | 1.5.2.2.1 | Restricción a la Autorización de CdP |  | 21d | 2018-06-04 | 2018-07-02 | 130 | 103d | 0d | blanco |
| 133 | 1.5.2.3 | **Implantación** |  | 1d | 2018-07-02 | 2018-07-02 |  | 103d |  |  |
| 134 | 1.5.2.3.1 | Implementar Restricción a la Autorización de CdP |  | 1d | 2018-07-02 | 2018-07-02 | 132FS-1d | 103d | 0d | blanco |
| 135 | 1.5.2.4 | Entregable: Acta de Aprobación de Restricción a la Autorización de CdP | milestone | 0d | 2018-07-02 | 2018-07-02 | 134 | 103d |  | blanco |
| 136 | 1.5.3 | **Limitación de CdP Autorizados** |  | 33.62d | 2018-05-14 | 2018-06-28 |  | 105.38d |  |  |
| 137 | 1.5.3.1 | **Analítica** |  | 2d | 2018-06-21 | 2018-06-22 |  | 109d |  | rojo |
| 138 | 1.5.3.1.1 | **Desarrollo** |  | 1d | 2018-06-21 | 2018-06-21 |  | 109d |  |  |
| 139 | 1.5.3.1.1.1 | Desarrollar Limitación de CdP Autorizados |  | 1d | 2018-06-21 | 2018-06-21 | 5FS+41d | 109d | 0d | blanco |
| 140 | 1.5.3.1.2 | **Control de Calidad** |  | 1d | 2018-06-22 | 2018-06-22 |  | 109d |  |  |
| 141 | 1.5.3.1.2.1 | Limitación de CdP Autorizados |  | 1d | 2018-06-22 | 2018-06-22 | 139 | 109d | 0d | blanco |
| 142 | 1.5.3.1.3 | **Implantación** |  | 1d | 2018-06-22 | 2018-06-22 |  | 109d |  |  |
| 143 | 1.5.3.1.3.1 | Implementar Limitación de CdP Autorizados |  | 1d | 2018-06-22 | 2018-06-22 | 141FS-1d | 109d | 0d | blanco |
| 144 | 1.5.3.2 | Entregable: Componente Análitico | milestone | 0d | 2018-06-22 | 2018-06-22 | 143 | 109d |  | blanco |
| 145 | 1.5.3.3 | **FSW** |  | 33.62d | 2018-05-14 | 2018-06-28 |  | 105.38d |  | rojo |
| 146 | 1.5.3.3.1 | **Analisis** |  | 20.5d | 2018-05-14 | 2018-06-11 |  | 112.38d |  | rojo |
| 147 | 1.5.3.3.1.1 | Elaboración de Análisis |  | 100h | 2018-05-14 | 2018-05-30 | 5FS+13d | 112.38d | 0d | rojo |
| 148 | 1.5.3.3.1.2 | Envío de Documento Análisis | milestone | 0d | 2018-06-04 | 2018-06-04 | 147FS+3d | 118.5d | 0d | blanco |
| 149 | 1.5.3.3.1.3 | Aprobación de Documento Análisis |  | 40h | 2018-06-04 | 2018-06-11 | 148 | 118.5d |  | blanco |
| 150 | 1.5.3.3.2 | **Desarrollo** |  | 21.62d | 2018-05-21 | 2018-06-19 |  | 105.38d |  | rojo |
| 151 | 1.5.3.3.2.1 | **Diseño** |  | 13.12d | 2018-05-31 | 2018-06-19 |  | 112.38d |  | rojo |
| 152 | 1.5.3.3.2.1.1 | Elaboración de Diseño |  | 73h | 2018-05-31 | 2018-06-13 | 147FS+1d | 112.38d | 0d | blanco |
| 153 | 1.5.3.3.2.1.2 | Envío de Documento Diseño | milestone | 0d | 2018-06-14 | 2018-06-14 | 152FS+1d | 112.38d | 0d | blanco |
| 154 | 1.5.3.3.2.1.3 | Aprobación de Documento Diseño |  | 24h | 2018-06-14 | 2018-06-19 | 153 | 112.38d |  | blanco |

Notes:
- 136: comentarios: Falta que análitico planifique la entrega de sus componentes
- 137: comentarios: Se necesita componente Analitico para que SWF avance desarrollo
- 145: comentarios: Cronograma de SWF aún no es DEFINITIVO.

| ID | WBS | Task | Type | Duration | Start | Finish | Predecessors | Total slack | Free slack | Tarea Critica |
| --- | --- | --- | --- | --- | --- | --- | --- | --- | --- | --- |
| 155 | 1.5.3.3.2.2 | **Construcción** |  | 19.62d | 2018-05-21 | 2018-06-15 |  | 105.38d |  | rojo |
| 156 | 1.5.3.3.2.2.1 | Construcción |  | 106h | 2018-05-21 | 2018-06-07 | 5FS+18d | 105.38d | 0d | rojo |
| 157 | 1.5.3.3.2.2.2 | Pruebas Unitarias |  | 8h | 2018-06-07 | 2018-06-08 | 156 | 105.38d | 0d | blanco |
| 158 | 1.5.3.3.2.2.3 | Pruebas de Integración y otros |  | 11h | 2018-06-08 | 2018-06-11 | 157 | 105.38d | 0d | blanco |
| 159 | 1.5.3.3.2.2.4 | Elaboración del documento de pase a producción |  | 24h | 2018-06-11 | 2018-06-14 | 158 | 105.38d | 0d | blanco |
| 160 | 1.5.3.3.2.2.5 | Actualización de documentación para el usuario |  | 16h | 2018-06-11 | 2018-06-13 | 158 | 116.38d |  | blanco |
| 161 | 1.5.3.3.2.2.6 | Envío de Construcción | milestone | 0d | 2018-06-15 | 2018-06-15 | 159FS+1d | 105.38d | 0d | blanco |
| 162 | 1.5.3.3.3 | Pruebas Desarrollo INSI |  | 24h | 2018-06-15 | 2018-06-20 | 161 | 105.38d | 0d | blanco |
| 163 | 1.5.3.3.4 | Envío entregable de software (Formal) | milestone | 0d | 2018-06-21 | 2018-06-21 | 162FS+1d | 105.38d | 0d | blanco |
| 164 | 1.5.3.3.5 | Aprobación de entregable de software |  | 40h | 2018-06-21 | 2018-06-28 | 163 | 105.38d |  | blanco |
| 165 | 1.5.4 | **Restricción a la Emisión de CdP (web services)** |  | 3d | 2018-04-23 | 2018-04-25 |  | 150d |  |  |
| 166 | 1.5.4.1 | **Desarrollo** |  | 1d | 2018-04-23 | 2018-04-23 |  | 150d |  |  |
| 167 | 1.5.4.1.1 | Desarrollar Restricción a la Emisión de CdP (web services) |  | 1d | 2018-04-23 | 2018-04-23 |  | 150d | 0d | rojo |
| 168 | 1.5.4.2 | **Control de Calidad** |  | 1d | 2018-04-24 | 2018-04-24 |  | 150d |  |  |
| 169 | 1.5.4.2.1 | CC Restricción a la Emisión de CdP (web services) |  | 1d | 2018-04-24 | 2018-04-24 | 167 | 150d | 0d | rojo |
| 170 | 1.5.4.3 | **Implantación** |  | 1d | 2018-04-25 | 2018-04-25 |  | 150d |  |  |
| 171 | 1.5.4.3.1 | Implementar Restricción a la Emisión de CdP (web services) |  | 1d | 2018-04-25 | 2018-04-25 | 169 | 150d | 0d | rojo |
| 172 | 1.5.4.4 | Entregable: Acta de Aprobación de Restricción a la Emisión de CdP (web services) | milestone | 0d | 2018-04-25 | 2018-04-25 | 171 | 150d |  | rojo |
| 173 | 1.5.5 | **Restricción a la Emisión de CPE** |  | 49d | 2018-04-23 | 2018-06-29 |  | 104d |  |  |
| 174 | 1.5.5.1 | **Desarrollo** |  | 19d | 2018-04-23 | 2018-05-18 |  | 104d |  |  |
| 175 | 1.5.5.1.1 | Desarrollar Restricción a la Emisión de CPE |  | 19d | 2018-04-23 | 2018-05-18 |  | 104d | 0d | rojo |
| 176 | 1.5.5.2 | **Control de Calidad** |  | 30d | 2018-05-21 | 2018-06-29 |  | 104d |  |  |
| 177 | 1.5.5.2.1 | Restricción a la Emisión de CPE |  | 30d | 2018-05-21 | 2018-06-29 | 175 | 104d | 0d | rojo |
| 178 | 1.5.5.3 | **Implantación** |  | 1d | 2018-06-29 | 2018-06-29 |  | 104d |  |  |
| 179 | 1.5.5.3.1 | Implementar Restricción a la Emisión de CPE |  | 1d | 2018-06-29 | 2018-06-29 | 177FS-1d | 104d | 0d | blanco |
| 180 | 1.5.5.4 | Entregable: Acta de Aprobación de Restricción a la Emisión de CPE | milestone | 0d | 2018-06-29 | 2018-06-29 | 179 | 104d |  | blanco |

Notes:
- 165: comentarios: No Planificado
- 173: comentarios: El normativo (Michael) no confirma la definición del MPN. Se solicitará fecha máxima en que debemos contar con MPN.

| ID | WBS | Task | Type | Duration | Start | Finish | Predecessors | Total slack | Free slack | Tarea Critica |
| --- | --- | --- | --- | --- | --- | --- | --- | --- | --- | --- |
| 181 | 1.5.6 | **Comprobante de contingencia al CPE** |  | 72d | 2018-04-23 | 2018-08-01 |  | 81d |  |  |
| 182 | 1.5.6.1 | **Desarrollo** |  | 57d | 2018-04-23 | 2018-07-11 |  | 81d |  |  |
| 183 | 1.5.6.1.1 | Formulario 816-Solicitud de autorización-Contingencia CPE ( RF1/RF2) |  | 22d | 2018-04-23 | 2018-05-23 |  | 111d | 0d | naranja |
| 184 | 1.5.6.1.2 | Proceso de Carga de Obligados- Contingencia CPE ( RF12) |  | 22d | 2018-04-23 | 2018-05-23 |  | 111d | 0d | naranja |
| 185 | 1.5.6.1.3 | Factura BVE Portal - Contingencia CPE ( RF3/RF7/RF8) |  | 39d | 2018-04-23 | 2018-06-15 |  | 84d | 0d | naranja |
| 186 | 1.5.6.1.4 | Receptor Contingencia CPE ( RF5/RF6) |  | 39d | 2018-04-23 | 2018-06-15 |  | 84d | 0d | rojo |
| 187 | 1.5.6.1.5 | Consultas SOL /Intranet - Contingencia CPE ( RF9/RF10/RF11) |  | 57d | 2018-04-23 | 2018-07-11 |  | 81d | 0d | rojo |
| 188 | 1.5.6.2 | **Control de Calidad** |  | 49d | 2018-05-24 | 2018-07-31 |  | 82d |  |  |
| 189 | 1.5.6.2.1 | Formulario 816-Solicitud de autorización-Contingencia CPE ( RF1/RF2) |  | 20d | 2018-05-24 | 2018-06-20 | 183 | 111d |  | blanco |
| 190 | 1.5.6.2.2 | Proceso de Carga de Obligados- Contingencia CPE ( RF12) |  | 20d | 2018-05-24 | 2018-06-20 | 184 | 111d |  | blanco |
| 191 | 1.5.6.2.3 | Factura BVE Portal - Contingencia CPE ( RF3/RF7/RF8) |  | 30d | 2018-06-18 | 2018-07-27 | 185 | 84d |  | blanco |
| 192 | 1.5.6.2.4 | Receptor Contingencia CPE ( RF5/RF6) |  | 30d | 2018-06-18 | 2018-07-27 | 186 | 84d |  | blanco |
| 193 | 1.5.6.2.5 | Consultas SOL /Intranet - Contingencia CPE ( RF9/RF10/RF11) |  | 14d | 2018-07-12 | 2018-07-31 | 187 | 81d | 0d | blanco |
| 194 | 1.5.6.3 | **Implantación** |  | 1d | 2018-08-01 | 2018-08-01 |  | 81d |  |  |
| 195 | 1.5.6.3.1 | Implementar Comprobante de contingencia al CPE |  | 1d | 2018-08-01 | 2018-08-01 | 187, 193 | 81d | 0d | blanco |
| 196 | 1.5.6.4 | Entregable: Acta de Aprobación de Comprobante de contingencia al CPE | milestone | 0d | 2018-08-01 | 2018-08-01 | 195 | 81d |  | blanco |
| 197 | 1.6 | **Control del registro de compras y ventas electrónico (RCVE)** |  | 82d | 2018-04-23 | 2018-08-15 |  | 71d |  |  |
| 198 | 1.6.1 | **Nuevo Padrón de omisos a la presentación del RCVE** |  | 76d | 2018-05-02 | 2018-08-15 |  | 71d |  |  |
| 199 | 1.6.1.1 | **Análisis** |  | 5d | 2018-05-02 | 2018-05-08 |  | 71d |  | rojo |
| 200 | 1.6.1.1.1 | Revisión del MPN |  | 2d | 2018-05-02 | 2018-05-03 | 5FS+5d | 71d | 0d | verde |
| 201 | 1.6.1.1.2 | Elaboración del F2-AR1 |  | 3d | 2018-05-04 | 2018-05-08 | 200 | 71d | 0d | verde |
| 202 | 1.6.1.2 | **Desarrollo** |  | 38d | 2018-05-09 | 2018-06-29 |  | 71d |  |  |
| 203 | 1.6.1.2.1 | Determinación de omisos y obligados |  | 38d | 2018-05-09 | 2018-06-29 | 201 | 71d | 0d | rojo |
| 204 | 1.6.1.2.2 | Consulta de obligados-Reporte del mes siguiente-Consulta de omisos |  | 38d | 2018-05-09 | 2018-06-29 | 201 | 71d | 0d | rojo |
| 205 | 1.6.1.2.3 | Opción libre consulta de obligados |  | 38d | 2018-05-09 | 2018-06-29 | 201 | 71d | 0d | rojo |

| ID | WBS | Task | Type | Duration | Start | Finish | Predecessors | Total slack | Free slack | Tarea Critica |
| --- | --- | --- | --- | --- | --- | --- | --- | --- | --- | --- |
| 206 | 1.6.1.3 | **Control de Calidad** |  | 33d | 2018-07-02 | 2018-08-15 |  | 71d |  |  |
| 207 | 1.6.1.3.1 | Determinación de omisos y obligados |  | 33d | 2018-07-02 | 2018-08-15 | 203 | 71d |  | blanco |
| 208 | 1.6.1.3.2 | Consulta de obligados-Reporte del mes siguiente-Consulta de omisos |  | 33d | 2018-07-02 | 2018-08-15 | 204 | 71d |  | blanco |
| 209 | 1.6.1.3.3 | Opción libre consulta de obligados |  | 33d | 2018-07-02 | 2018-08-15 | 205 | 71d | 0d | blanco |
| 210 | 1.6.1.4 | **Implantación** |  | 1d | 2018-08-15 | 2018-08-15 |  | 71d |  |  |
| 211 | 1.6.1.4.1 | Implementar Padrón de omisos a la presentación del RCVE |  | 1d | 2018-08-15 | 2018-08-15 | 209FS-1d | 71d | 0d | blanco |
| 212 | 1.6.1.5 | Entregable: Acta de Aprobación de Padrón de omisos a la presentación del RCVE | milestone | 0d | 2018-08-15 | 2018-08-15 | 211 | 71d |  | blanco |
| 213 | 1.6.2 | **Control de omisos con padrón de RCVE** |  | 5d | 2018-04-23 | 2018-04-27 |  | 148d |  |  |
| 214 | 1.6.2.1 | **Análisis** |  | 2d | 2018-04-23 | 2018-04-24 |  | 148d |  | rojo |
| 215 | 1.6.2.1.1 | Revisión del MPN |  | 1d | 2018-04-23 | 2018-04-23 |  | 148d | 0d | rojo |
| 216 | 1.6.2.1.2 | Elaboración del F2-AR1 |  | 1d | 2018-04-24 | 2018-04-24 | 215 | 148d | 0d | rojo |
| 217 | 1.6.2.2 | **Desarrollo** |  | 1d | 2018-04-25 | 2018-04-25 |  | 148d |  |  |
| 218 | 1.6.2.2.1 | Desarrollar Control de omisos con padrón de RCVE |  | 1d | 2018-04-25 | 2018-04-25 | 216 | 148d | 0d | rojo |
| 219 | 1.6.2.3 | **Control de Calidad** |  | 1d | 2018-04-26 | 2018-04-26 |  | 148d |  |  |
| 220 | 1.6.2.3.1 | CC Control de omisos con padrón de RCVE |  | 1d | 2018-04-26 | 2018-04-26 | 218 | 148d | 0d | rojo |
| 221 | 1.6.2.4 | **Implantación** |  | 1d | 2018-04-27 | 2018-04-27 |  | 148d |  |  |
| 222 | 1.6.2.4.1 | Implementar Control de omisos con padrón de RCVE |  | 1d | 2018-04-27 | 2018-04-27 | 220 | 148d | 0d | rojo |
| 223 | 1.6.2.5 | Entregable: Acta de Aprobación de Control de omisos con padrón de RCVE | milestone | 0d | 2018-04-27 | 2018-04-27 | 222 | 148d |  | rojo |
| 224 | 1.7 | **Control de Declaración IGV - Renta Mensual** |  | 93d | 2018-04-23 | 2018-08-30 |  | 60d |  | rojo |
| 225 | 1.7.1 | **Reemplazo de PDT por Declara Fácil con propuesta de DJ** |  | 93d | 2018-04-23 | 2018-08-30 |  | 60d |  | rojo |
| 226 | 1.7.1.1 | **Análisis** |  | 2d | 2018-04-23 | 2018-04-24 |  | 60d |  |  |
| 227 | 1.7.1.1.1 | Revisión del MPN |  | 1d | 2018-04-23 | 2018-04-23 |  | 60d | 0d | rojo |
| 228 | 1.7.1.1.2 | Elaboración del F2-AR1 |  | 1d | 2018-04-24 | 2018-04-24 | 227 | 60d | 0d | rojo |
| 229 | 1.7.1.2 | **Desarrollo** |  | 70d | 2018-04-25 | 2018-08-01 |  | 60d |  |  |
| 230 | 1.7.1.2.1 | Reemplazo de PDT por Declara Fácil con propuesta de DJ |  | 70d | 2018-04-25 | 2018-08-01 | 228 | 60d | 0d | rojo |

| ID | WBS | Task | Type | Duration | Start | Finish | Predecessors | Total slack | Free slack | Tarea Critica | comentarios |
| --- | --- | --- | --- | --- | --- | --- | --- | --- | --- | --- | --- |
| 231 | 1.7.1.3 | **Control de Calidad** |  | 21d | 2018-08-02 | 2018-08-30 |  | 60d |  |  |  |
| 232 | 1.7.1.3.1 | Control de Calidad a reemplazo de PDT por Declara Fácil con propuesta de DJ |  | 21d | 2018-08-02 | 2018-08-30 | 230 | 60d | 0d | blanco |  |
| 233 | 1.7.1.4 | **Implantación** |  | 0d | 2018-08-30 | 2018-08-30 |  | 60d |  |  |  |
| 234 | 1.7.1.4.1 | Reemplazo de PDT por Declara Fácil con propuesta de DJ | milestone | 0d | 2018-08-30 | 2018-08-30 | 232 | 60d |  | blanco |  |
| 235 | 1.7.2 | **Integración del control de inconsistencias del RCVE y la propuesta de la Dec. IGV Renta Mensual** |  | 5d | 2018-04-23 | 2018-04-27 |  | 148d |  | rojo | No existe definición. Se consultará a C.Drago del alcance. |
| 236 | 1.7.2.1 | **Análisis** |  | 2d | 2018-04-23 | 2018-04-24 |  | 148d |  |  |  |
| 237 | 1.7.2.1.1 | Revisión del MPN |  | 1d | 2018-04-23 | 2018-04-23 |  | 148d | 0d | rojo |  |
| 238 | 1.7.2.1.2 | Elaboración del F2-AR1 |  | 1d | 2018-04-24 | 2018-04-24 | 237 | 148d | 0d | rojo |  |
| 239 | 1.7.2.2 | **Desarrollo** |  | 1d | 2018-04-25 | 2018-04-25 |  | 148d |  |  |  |
| 240 | 1.7.2.2.1 | Integración del control de inconsistencias del RCVE y la propuesta de la Dec. IGV Renta Mensual |  | 1d | 2018-04-25 | 2018-04-25 | 238 | 148d | 0d | rojo |  |
| 241 | 1.7.2.3 | **Control de Calidad** |  | 1d | 2018-04-26 | 2018-04-26 |  | 148d |  |  |  |
| 242 | 1.7.2.3.1 | Integración del control de inconsistencias del RCVE y la propuesta de la Dec. IGV Renta Mensual |  | 1d | 2018-04-26 | 2018-04-26 | 240 | 148d | 0d | rojo |  |
| 243 | 1.7.2.4 | **Implantación** |  | 1d | 2018-04-27 | 2018-04-27 |  | 148d |  |  |  |
| 244 | 1.7.2.4.1 | Integración del control de inconsistencias del RCVE y la propuesta de la Dec. IGV Renta Mensual |  | 1d | 2018-04-27 | 2018-04-27 | 242 | 148d |  | rojo |  |
| 245 | 1.7.3 | **Determinación de omisos a la DJ del IGV Renta Mensual** |  | 27d | 2018-04-23 | 2018-05-30 |  | 126d |  | rojo |  |
| 246 | 1.7.3.1 | **Análisis** |  | 2d | 2018-04-23 | 2018-04-24 |  | 126d |  |  |  |
| 247 | 1.7.3.1.1 | Revisión del MPN |  | 1d | 2018-04-23 | 2018-04-23 |  | 126d | 0d | rojo |  |
| 248 | 1.7.3.1.2 | Elaboración del F2-AR1 |  | 1d | 2018-04-24 | 2018-04-24 | 247 | 126d | 0d | rojo |  |
| 249 | 1.7.3.2 | **Desarrollo** |  | 15d | 2018-04-25 | 2018-05-16 |  | 126d |  |  |  |
| 250 | 1.7.3.2.1 | Determinación de omisos a la DJ del IGV Renta Mensual |  | 15d | 2018-04-25 | 2018-05-16 | 248 | 126d | 0d | rojo |  |
| 251 | 1.7.3.3 | **Control de Calidad** |  | 10d | 2018-05-17 | 2018-05-30 |  | 126d |  |  |  |
| 252 | 1.7.3.3.1 | Determinación de omisos a la DJ del IGV Renta Mensual |  | 10d | 2018-05-17 | 2018-05-30 | 250 | 126d | 0d | rojo |  |
| 253 | 1.7.3.4 | **Implantación** |  | 1d | 2018-05-30 | 2018-05-30 |  | 126d |  |  |  |
| 254 | 1.7.3.4.1 | Determinación de omisos a la DJ del IGV Renta Mensual |  | 1d | 2018-05-30 | 2018-05-30 | 252FS-1d | 126d | 0d | blanco |  |
| 255 | 1.7.3.5 | Entregable: Determinación de omisos a la DJ del IGV renta Mensual Implementado | milestone | 0d | 2018-05-30 | 2018-05-30 | 254 | 126d |  | blanco |  |

| ID | WBS | Task | Type | Duration | Start | Finish | Predecessors | Total slack | Free slack | Tarea Critica |
| --- | --- | --- | --- | --- | --- | --- | --- | --- | --- | --- |
| 256 | 1.7.4 | **Determinación de omisos a la DDJJ IGV Renta Mensual - Comprobante Único** |  | 5d | 2018-04-23 | 2018-04-27 |  | 148d |  | rojo |
| 257 | 1.7.4.1 | **Análisis** |  | 2d | 2018-04-23 | 2018-04-24 |  | 148d |  |  |
| 258 | 1.7.4.1.1 | Revisión del MPN |  | 1d | 2018-04-23 | 2018-04-23 |  | 148d | 0d | rojo |
| 259 | 1.7.4.1.2 | Elaboración del F2-AR1 |  | 1d | 2018-04-24 | 2018-04-24 | 258 | 148d | 0d | rojo |
| 260 | 1.7.4.2 | **Desarrollo** |  | 1d | 2018-04-25 | 2018-04-25 |  | 148d |  |  |
| 261 | 1.7.4.2.1 | Determinación de omisos a la DDJJ IGV Renta Mensual - Comprobante Único |  | 1d | 2018-04-25 | 2018-04-25 | 259 | 148d | 0d | rojo |
| 262 | 1.7.4.3 | **Control de Calidad** |  | 1d | 2018-04-26 | 2018-04-26 |  | 148d |  |  |
| 263 | 1.7.4.3.1 | Determinación de omisos a la DDJJ IGV Renta Mensual - Comprobante Único |  | 1d | 2018-04-26 | 2018-04-26 | 261 | 148d | 0d | rojo |
| 264 | 1.7.4.4 | **Implantación** |  | 1d | 2018-04-27 | 2018-04-27 |  | 148d |  |  |
| 265 | 1.7.4.4.1 | Determinación de omisos a la DDJJ IGV Renta Mensual - Comprobante Único |  | 1d | 2018-04-27 | 2018-04-27 | 263 | 148d | 0d | rojo |
| 266 | 1.7.4.5 | Entregable: Determinación de omisos a la DDJJ IGV Renta Mensual - Comprobante Único Implementado | milestone | 0d | 2018-04-27 | 2018-04-27 | 265 | 148d |  | rojo |
| 267 | 1.7.5 | **Actualización en línea de las presentaciones de DJ - MEPECO** |  | 44d | 2018-04-23 | 2018-06-22 |  | 109d |  | rojo |
| 268 | 1.7.5.1 | **Análisis** |  | 2d | 2018-04-23 | 2018-04-24 |  | 109d |  |  |
| 269 | 1.7.5.1.1 | Revisión del MPN |  | 1d | 2018-04-23 | 2018-04-23 |  | 109d | 0d | rojo |
| 270 | 1.7.5.1.2 | Elaboración del F2-AR1 |  | 1d | 2018-04-24 | 2018-04-24 | 269 | 109d | 0d | rojo |
| 271 | 1.7.5.2 | **Desarrollo** |  | 17d | 2018-04-25 | 2018-05-18 |  | 109d |  |  |
| 272 | 1.7.5.2.1 | Actualización en línea de las presentaciones de DJ - MEPECO |  | 17d | 2018-04-25 | 2018-05-18 | 270 | 109d | 0d | rojo |
| 273 | 1.7.5.3 | **Control de Calidad** |  | 25d | 2018-05-21 | 2018-06-22 |  | 109d |  |  |
| 274 | 1.7.5.3.1 | Actualización en línea de las presentaciones de DJ - MEPECO |  | 25d | 2018-05-21 | 2018-06-22 | 272 | 109d | 0d | rojo |
| 275 | 1.7.5.4 | **Implantación** |  | 1d | 2018-06-22 | 2018-06-22 |  | 109d |  |  |
| 276 | 1.7.5.4.1 | Actualización en línea de las presentaciones de DJ - MEPECO |  | 1d | 2018-06-22 | 2018-06-22 | 274FS-1d | 109d | 0d | blanco |
| 277 | 1.7.5.5 | Entregable: Actualización en línea de las presentaciones de DJ - MEPECO Implementado | milestone | 0d | 2018-06-22 | 2018-06-22 | 276 | 109d |  | blanco |
| 278 | 1.8 | **Fiscalización: Gestión Masiva de Control del IGV** |  | 5d | 2018-04-23 | 2018-04-27 |  | 148d |  | rojo |
| 279 | 1.8.1 | **Perfil para seleccionar Accion masiva** |  | 5d | 2018-04-23 | 2018-04-27 |  | 148d |  | rojo |
| 280 | 1.8.1.1 | **Análisis** |  | 2d | 2018-04-23 | 2018-04-24 |  | 148d |  |  |
| 281 | 1.8.1.1.1 | Revisión del MPN |  | 1d | 2018-04-23 | 2018-04-23 |  | 148d | 0d | rojo |
| 282 | 1.8.1.1.2 | Elaboración del F2-AR1 |  | 1d | 2018-04-24 | 2018-04-24 | 281 | 148d | 0d | rojo |

Notes:
- 256: comentarios: No existe definición. Se informará a Y.Lecca del riesgo de no cumplir con lo requerido por el negocio.

| ID | WBS | Task | Type | Duration | Start | Finish | Predecessors | Total slack | Free slack | Tarea Critica |
| --- | --- | --- | --- | --- | --- | --- | --- | --- | --- | --- |
| 283 | 1.8.1.2 | **Desarrollo** |  | 1d | 2018-04-25 | 2018-04-25 |  | 148d |  |  |
| 284 | 1.8.1.2.1 | Perfil para seleccionar Accion masiva |  | 1d | 2018-04-25 | 2018-04-25 | 282 | 148d | 0d | rojo |
| 285 | 1.8.1.3 | **Control de Calidad** |  | 1d | 2018-04-26 | 2018-04-26 |  | 148d |  |  |
| 286 | 1.8.1.3.1 | Perfil para seleccionar Accion masiva |  | 1d | 2018-04-26 | 2018-04-26 | 284 | 148d | 0d | rojo |
| 287 | 1.8.1.4 | **Implantación** |  | 1d | 2018-04-27 | 2018-04-27 |  | 148d |  |  |
| 288 | 1.8.1.4.1 | Perfil para seleccionar Accion masiva |  | 1d | 2018-04-27 | 2018-04-27 | 286 | 148d | 0d | rojo |
| 289 | 1.8.1.5 | Entregable: Perfil para seleccionar Accion masiva Implementado | milestone | 0d | 2018-04-27 | 2018-04-27 | 288 | 148d |  | rojo |
| 290 | 1.8.2 | **Nuevo CCV que integra el Gema WEB** |  | 5d | 2018-04-23 | 2018-04-27 |  | 148d |  | rojo |
| 291 | 1.8.2.1 | **Análisis** |  | 2d | 2018-04-23 | 2018-04-24 |  | 148d |  |  |
| 292 | 1.8.2.1.1 | Revisión del MPN |  | 1d | 2018-04-23 | 2018-04-23 |  | 148d | 0d | rojo |
| 293 | 1.8.2.1.2 | Elaboración del F2-AR1 |  | 1d | 2018-04-24 | 2018-04-24 | 292 | 148d | 0d | rojo |
| 294 | 1.8.2.2 | **Desarrollo** |  | 1d | 2018-04-25 | 2018-04-25 |  | 148d |  |  |
| 295 | 1.8.2.2.1 | Nuevo CCV que integra el Gema WEB |  | 1d | 2018-04-25 | 2018-04-25 | 293 | 148d | 0d | rojo |
| 296 | 1.8.2.3 | **Control de Calidad** |  | 1d | 2018-04-26 | 2018-04-26 |  | 148d |  |  |
| 297 | 1.8.2.3.1 | Nuevo CCV que integra el Gema WEB |  | 1d | 2018-04-26 | 2018-04-26 | 295 | 148d | 0d | rojo |
| 298 | 1.8.2.4 | **Implantación** |  | 1d | 2018-04-27 | 2018-04-27 |  | 148d |  |  |
| 299 | 1.8.2.4.1 | Nuevo CCV que integra el Gema WEB |  | 1d | 2018-04-27 | 2018-04-27 | 297 | 148d | 0d | rojo |
| 300 | 1.8.2.5 | Entregable: Nuevo CCV que integra el Gema WEB Implementado | milestone | 0d | 2018-04-27 | 2018-04-27 | 299 | 148d |  | rojo |
| 301 | 1.8.3 | **SINE para las carta inductivas y esquelas** |  | 5d | 2018-04-23 | 2018-04-27 |  | 148d |  | rojo |
| 302 | 1.8.3.1 | **Análisis** |  | 2d | 2018-04-23 | 2018-04-24 |  | 148d |  |  |
| 303 | 1.8.3.1.1 | Revisión del MPN |  | 1d | 2018-04-23 | 2018-04-23 |  | 148d | 0d | rojo |
| 304 | 1.8.3.1.2 | Elaboración del F2-AR1 |  | 1d | 2018-04-24 | 2018-04-24 | 303 | 148d | 0d | rojo |
| 305 | 1.8.3.2 | **Desarrollo** |  | 1d | 2018-04-25 | 2018-04-25 |  | 148d |  |  |
| 306 | 1.8.3.2.1 | SINE para las carta inductivas y esquelas |  | 1d | 2018-04-25 | 2018-04-25 | 304 | 148d | 0d | rojo |

| ID | WBS | Task | Type | Duration | Start | Finish | Predecessors | Total slack | Free slack | Tarea Critica |
| --- | --- | --- | --- | --- | --- | --- | --- | --- | --- | --- |
| 307 | 1.8.3.3 | **Control de Calidad** |  | 1d | 2018-04-26 | 2018-04-26 |  | 148d |  |  |
| 308 | 1.8.3.3.1 | SINE para las carta inductivas y esquelas |  | 1d | 2018-04-26 | 2018-04-26 | 306 | 148d | 0d | rojo |
| 309 | 1.8.3.4 | **Implantación** |  | 1d | 2018-04-27 | 2018-04-27 |  | 148d |  |  |
| 310 | 1.8.3.4.1 | SINE para las carta inductivas y esquelas |  | 1d | 2018-04-27 | 2018-04-27 | 308 | 148d | 0d | rojo |
| 311 | 1.8.3.5 | Entregable: SINE para las carta inductivas y esquelas Implementado | milestone | 0d | 2018-04-27 | 2018-04-27 | 310 | 148d |  | rojo |
| 312 | 1.8.4 | **SIEV para la gestión inductiva** |  | 5d | 2018-04-23 | 2018-04-27 |  | 148d |  | rojo |
| 313 | 1.8.4.1 | **Análisis** |  | 2d | 2018-04-23 | 2018-04-24 |  | 148d |  |  |
| 314 | 1.8.4.1.1 | Revisión del MPN |  | 1d | 2018-04-23 | 2018-04-23 |  | 148d | 0d | rojo |
| 315 | 1.8.4.1.2 | Elaboración del F2-AR1 |  | 1d | 2018-04-24 | 2018-04-24 | 314 | 148d | 0d | rojo |
| 316 | 1.8.4.2 | **Desarrollo** |  | 1d | 2018-04-25 | 2018-04-25 |  | 148d |  |  |
| 317 | 1.8.4.2.1 | SIEV para la gestión inductiva |  | 1d | 2018-04-25 | 2018-04-25 | 315 | 148d | 0d | rojo |
| 318 | 1.8.4.3 | **Control de Calidad** |  | 1d | 2018-04-26 | 2018-04-26 |  | 148d |  |  |
| 319 | 1.8.4.3.1 | SIEV para la gestión inductiva |  | 1d | 2018-04-26 | 2018-04-26 | 317 | 148d | 0d | rojo |
| 320 | 1.8.4.4 | **Implantación** |  | 1d | 2018-04-27 | 2018-04-27 |  | 148d |  |  |
| 321 | 1.8.4.4.1 | SIEV para la gestión inductiva |  | 1d | 2018-04-27 | 2018-04-27 | 319 | 148d | 0d | rojo |
| 322 | 1.8.4.5 | Entregable: SIEV para la gestión inductiva Implementado | milestone | 0d | 2018-04-27 | 2018-04-27 | 321 | 148d |  | rojo |
| 323 | 1.8.5 | **Utilización del CRM como soporte a las campañas de gestión inductiva** |  | 5d | 2018-04-23 | 2018-04-27 |  | 148d |  | rojo |
| 324 | 1.8.5.1 | **Análisis** |  | 2d | 2018-04-23 | 2018-04-24 |  | 148d |  | rojo |
| 325 | 1.8.5.1.1 | Revisión del MPN |  | 1d | 2018-04-23 | 2018-04-23 |  | 148d | 0d | rojo |
| 326 | 1.8.5.1.2 | Elaboración del F2-AR1 |  | 1d | 2018-04-24 | 2018-04-24 | 325 | 148d | 0d | rojo |
| 327 | 1.8.5.2 | **Desarrollo** |  | 1d | 2018-04-25 | 2018-04-25 |  | 148d |  |  |
| 328 | 1.8.5.2.1 | CRM como soporte a las campañas de gestión inductiva |  | 1d | 2018-04-25 | 2018-04-25 | 326 | 148d | 0d | rojo |
| 329 | 1.8.5.3 | **Control de Calidad** |  | 1d | 2018-04-26 | 2018-04-26 |  | 148d |  |  |
| 330 | 1.8.5.3.1 | CRM como soporte a las campañas de gestión inductiva |  | 1d | 2018-04-26 | 2018-04-26 | 328 | 148d | 0d | rojo |

| ID | WBS | Task | Type | Duration | Start | Finish | Predecessors | Total slack | Free slack | Tarea Critica |
| --- | --- | --- | --- | --- | --- | --- | --- | --- | --- | --- |
| 331 | 1.8.5.4 | **Implantación** |  | 1d | 2018-04-27 | 2018-04-27 |  | 148d |  |  |
| 332 | 1.8.5.4.1 | CRM como soporte a las campañas de gestión inductiva |  | 1d | 2018-04-27 | 2018-04-27 | 330 | 148d | 0d | rojo |
| 333 | 1.8.5.5 | Entregable: CRM como soporte a las campañas de gestión inductiva-Implementado | milestone | 0d | 2018-04-27 | 2018-04-27 | 332 | 148d |  | rojo |
| 334 | 1.9 | **Fiscalización Parcial Electrónica del IGV** |  | 48d | 2018-04-23 | 2018-06-28 |  | 105d |  | rojo |
| 335 | 1.9.1 | **Piloto de fiscalización parcial electrónica de comprobantes duplicados** |  | 48d | 2018-04-23 | 2018-06-28 |  | 105d |  | rojo |
| 336 | 1.9.1.1 | **Análisis** |  | 2d | 2018-04-23 | 2018-04-24 |  | 105d |  |  |
| 337 | 1.9.1.1.1 | Revisión del MPN |  | 1d | 2018-04-23 | 2018-04-23 |  | 105d | 0d | rojo |
| 338 | 1.9.1.1.2 | Elaboración del F2-AR1 |  | 1d | 2018-04-24 | 2018-04-24 | 337 | 105d | 0d | rojo |
| 339 | 1.9.1.2 | **Desarrollo** |  | 26d | 2018-04-25 | 2018-05-31 |  | 105d |  |  |
| 340 | 1.9.1.2.1 | Piloto de fiscalización parcial electrónica de comprobantes duplicados |  | 26d | 2018-04-25 | 2018-05-31 | 338 | 105d | 0d | rojo |
| 341 | 1.9.1.3 | **Control de Calidad** |  | 20d | 2018-06-01 | 2018-06-28 |  | 105d |  |  |
| 342 | 1.9.1.3.1 | Piloto de fiscalización parcial electrónica de comprobantes duplicados |  | 20d | 2018-06-01 | 2018-06-28 | 340 | 105d | 0d | blanco |
| 343 | 1.9.1.4 | **Implantación** |  | 1d | 2018-06-28 | 2018-06-28 |  | 105d |  |  |
| 344 | 1.9.1.4.1 | Piloto de fiscalización parcial electrónica de comprobantes duplicados |  | 1d | 2018-06-28 | 2018-06-28 | 342FS-1d | 105d | 0d | blanco |
| 345 | 1.9.1.5 | Entregable: Piloto de fiscalización parcial electrónica de comprobantes duplicados- Implementado | milestone | 0d | 2018-06-28 | 2018-06-28 | 344 | 105d |  | blanco |
| 346 | 1.9.2 | **Fiscalización parcial electrónica de diferencias entre RCVE y DJ de IGV** |  | 6d | 2018-04-23 | 2018-04-30 |  | 147d |  | rojo |
| 347 | 1.9.2.1 | **Análisis** |  | 2d | 2018-04-23 | 2018-04-24 |  | 147d |  |  |
| 348 | 1.9.2.1.1 | Revisión del MPN |  | 1d | 2018-04-23 | 2018-04-23 |  | 147d | 0d | rojo |
| 349 | 1.9.2.1.2 | Elaboración del F2-AR1 |  | 1d | 2018-04-24 | 2018-04-24 | 348 | 147d | 0d | rojo |
| 350 | 1.9.2.2 | **Desarrollo** |  | 1d | 2018-04-25 | 2018-04-25 |  | 147d |  |  |
| 351 | 1.9.2.2.1 | Fiscalización parcial electrónica de diferencias entre RCVE y DJ de IGV |  | 1d | 2018-04-25 | 2018-04-25 | 349 | 147d | 0d | rojo |
| 352 | 1.9.2.3 | **Control de Calidad** |  | 1d | 2018-04-26 | 2018-04-26 |  | 147d |  |  |
| 353 | 1.9.2.3.1 | Fiscalización parcial electrónica de diferencias entre RCVE y DJ de IGV |  | 1d | 2018-04-26 | 2018-04-26 | 351 | 147d | 0d | rojo |
| 354 | 1.9.2.4 | **Implantación** |  | 1d | 2018-04-27 | 2018-04-27 |  | 147d |  |  |
| 355 | 1.9.2.4.1 | Fiscalización parcial electrónica de diferencias entre RCVE y DJ de IGV |  | 1d | 2018-04-27 | 2018-04-27 | 353 | 147d | 0d | rojo |
| 356 | 1.9.2.5 | Entregable: Fiscalización parcial electrónica de diferencias entre RCVE y DJ de IGV- Implementado |  | 1d | 2018-04-30 | 2018-04-30 | 355 | 147d |  | rojo |

| ID | WBS | Task | Duration | Start | Finish | Predecessors | Complete | Remaining | Total slack | Tarea Critica |
| --- | --- | --- | --- | --- | --- | --- | --- | --- | --- | --- |
| 357 | 1.10 | **CEI Alineado a Procesos** | 153d | 2018-04-23 A | 2018-11-22 |  | 8% | 141.53d | 0d |  |
| 358 | 1.10.1 | **Iteración 1** | 97d | 2018-04-23 A | 2018-09-05 |  | 8% | 89.24d | 0d |  |
| 359 | 1.10.1.1 | Elaborar Documento de Reglas de Negocio | 10d | 2018-04-23 A | 2018-05-07 |  | 50% | 5d | 0d | rojo |
| 360 | 1.10.1.2 | Elaborar Mapa de Procesos AS IS | 30d | 2018-04-23 A | 2018-06-15 | 359 | 3% | 29d | 0d | rojo |
| 361 | 1.10.1.3 | Elaborar Mapa de Procesos TO BE | 30d | 2018-04-23 A | 2018-07-26 | 360 | 3% | 29d | 0d | rojo |
| 362 | 1.10.1.4 | Elaborar Ficha del Proceso | 30d | 2018-04-23 A | 2018-09-05 | 361 | 3% | 29d | 0d | rojo |
| 363 | 1.10.2 | **Iteración 2** | 153d | 2018-04-23 A | 2018-11-22 |  | 7% | 142.8d | 0d |  |
| 364 | 1.10.2.1 | Elaborar Documento de Reglas de Negocio | 15d | 2018-04-23 A | 2018-09-25 | 362 | 7% | 14d | 0d | rojo |
| 365 | 1.10.2.2 | Elaborar Mapa de Procesos AS IS | 15d | 2018-04-23 A | 2018-10-15 | 364 | 7% | 14d | 0d | rojo |
| 366 | 1.10.2.3 | Elaborar Mapa de Procesos TO BE | 15d | 2018-04-23 A | 2018-11-02 | 365 | 7% | 14d | 0d | rojo |
| 367 | 1.10.2.4 | Elaborar Ficha del Proceso | 15d | 2018-04-23 A | 2018-11-22 | 366 | 7% | 14d | 0d | rojo |
